# Website Example.xml

How a schedule from MS Project XML changed from version to version. A marks actual dates.

## Version 1 (data date 2020-04-03, saved 2021-03-02, file file-1615246076504)

| ID | WBS | Task | Duration | Start | Finish | Predecessors | Complete | Total float | Constraint |
| --- | --- | --- | --- | --- | --- | --- | --- | --- | --- |
| 1 | 1 | **Northern Farm Foods Web Site 2019** | 419d | 2019-01-01 A | 2020-08-07 |  | 82% | 0d |  |
| 2 |  | Tendering Process & Contract | 50d | 2019-01-01 A | 2019-03-11 A |  | 100% |  | start no earlier than 2019-01-01 |
| 3 | 1.2 | **Requirements** | 65d | 2019-03-14 A | 2019-06-12 A |  | 100% |  |  |
| 4 |  | Requirements Definition | 65d | 2019-03-14 A | 2019-06-12 A | 2 | 100% |  | finish no earlier than 2019-06-12 |
| 5 |  | Requirements Signoff | 0d | 2019-06-12 A | 2019-06-12 A | 4 | 100% |  |  |
| 6 | 1.3 | **Design & Development** | 227d | 2019-01-01 A | 2019-11-13 A |  | 100% |  |  |
| 7 | 1.3.1 | **Analysis & Design** | 51d | 2019-06-14 A | 2019-08-23 A |  | 100% |  |  |
| 8 |  | Analysis and Design | 51d | 2019-06-14 A | 2019-08-23 A | 5 | 100% |  | finish no earlier than 2019-08-23 |
| 9 |  | Design Signoff | 0d | 2019-08-23 A | 2019-08-23 A | 8 | 100% |  |  |
| 10 | 1.3.2 | **Development** | 227d | 2019-01-01 A | 2019-11-13 A |  | 100% |  |  |
| 11 |  | Graphical Resources and Branding | 30d | 2019-08-26 A | 2019-10-04 A | 9 | 100% |  |  |
| 12 |  | Database Implementation | 25d | 2019-10-10 A | 2019-11-13 A |  | 100% |  | start no earlier than 2019-10-10 |
| 13 |  | HTML, etc | 30d | 2019-01-01 A | 2019-02-11 A |  | 100% |  |  |
| 14 | 1.4 | **Testing** | 93d | 2020-03-18 A | 2020-07-24 |  | 44% | 0d |  |
| 15 |  | Test Script | 40.5d | 2020-03-18 A | 2020-05-13 A |  | 100% |  | start no earlier than 2020-03-18 |
| 16 |  | Testing | 37.5d | 2020-05-13 | 2020-07-03 | 15 |  | 0d |  |
| 17 |  | User Testing | 15d | 2020-07-06 | 2020-07-24 | 16 |  | 0d |  |
| 18 |  | Acceptance | 0d | 2020-07-24 | 2020-07-24 | 17 |  | 0d |  |
| 19 |  | Live Implementation | 10d | 2020-07-27 | 2020-08-07 | 18 |  | 0d |  |
| 20 |  | Go Live | 0d | 2020-08-07 | 2020-08-07 | 19 |  | 0d |  |

## Version 2 (data date 2020-04-17, saved 2021-02-22, file file-1614003212916)

Last finish 2020-08-07 → 2020-10-30 (+84d). Complete tasks 9 → 8.

Changed:

| ID | Task | Start | Finish | Duration | Complete | Total float | Other |
| --- | --- | --- | --- | --- | --- | --- | --- |
| 1 | **Northern Farm Foods Web Site 2019** |  | 2020-08-07 → 2020-10-30 (+84d) | 419d → 478.5d | 82% → 66% |  |  |
| 14 | **Testing** |  | 2020-07-24 → 2020-10-15 (+83d) | 93d → 151.5d | 44% → 15% |  |  |
| 15 | Test Script |  | 2020-05-13 A → 2020-07-31 (+79d) | 40.5d → 98d | 100% → 23% | none → 0d | constraint start no earlier than 2020-03-18 → finish no earlier than 2020-07-31 |
| 16 | Testing | 2020-05-13 → 2020-08-03 (+82d) | 2020-07-03 → 2020-09-23 (+82d) |  |  |  |  |
| 17 | User Testing | 2020-07-06 → 2020-09-23 (+79d) | 2020-07-24 → 2020-10-14 (+82d) |  |  |  | resources none → Toby Arnott |
| 18 | Acceptance | 2020-07-24 → 2020-10-14 (+82d) | 2020-07-24 → 2020-10-15 (+83d) | 0d → 1d |  |  | resources none → Toby Arnott |
| 19 | Live Implementation | 2020-07-27 → 2020-10-15 (+80d) | 2020-08-07 → 2020-10-29 (+83d) |  |  |  | resources none → Lorraine Research |
| 20 | Go Live | 2020-08-07 → 2020-10-29 (+83d) | 2020-08-07 → 2020-10-30 (+84d) | 0d → 1d |  |  | resources none → Lorraine Research |
